# Nociception article

Schedule from GanttProject, 2019-04-05 to 2019-07-15.
Holidays every year on 01-01, 01-07, 02-23, 03-08, 05-01, 05-09, 06-12, 11-04

## Calendars

- Project calendar: Mon-Fri working; Sat-Sun off.

## Resources

| Resource |
| --- |
| Alina Sulemanova |
| Fail Gafarov |
| Max Talanov |
| Oleg Gafurov |
| Rashid Ashatovich Ginniatullin |

## Schedule

| ID | WBS | Task | Type | Duration | Start | Finish | Predecessors | Complete | Resources |
| --- | --- | --- | --- | --- | --- | --- | --- | --- | --- |
| 1 | 1 | **5-HT simulation** |  | 6d | 2019-04-05 | 2019-04-12 |  | 100% | Alina Sulemanova |
| 2 | 1.1 | 5-HT + Nav1.8 sim |  | 2d | 2019-04-05 | 2019-04-08 |  | 100% |  |
| 3 | 1.2 | 5-HT ATP |  | 4d | 2019-04-09 | 2019-04-12 | 2 | 100% |  |
| 4 | 2 | Long simulations |  | 10d | 2019-04-15 | 2019-04-26 | 1 | 100% | Alina Sulemanova |
| 5 | 3 | Experiments done | milestone | 0d | 2019-04-29 | 2019-04-29 | 4 |  |  |
| 6 | 4 | create figure 7 |  | 1d | 2019-04-29 | 2019-04-29 | 1, 4 | 100% | Alina Sulemanova |
| 7 | 5 | write 5-HT section |  | 3d | 2019-04-30 | 2019-05-03 | 6 | 100% | Max Talanov |
| 8 | 6 | rewrite Modeling complex nerve activity |  | 4d | 2019-05-06 | 2019-05-10 | 1, 6, 7 | 100% | Max Talanov; Rashid Ashatovich Ginniatullin |
| 9 | 7 | dates update | milestone | 0d | 2019-06-20 | 2019-06-20 |  |  |  |
| 10 | 8 | discuss the state of the article |  | 1d | 2019-06-20 | 2019-06-20 | 9 |  |  |
| 11 | 9 | rewrite Discussion |  | 5d | 2019-06-21 | 2019-06-27 | 8, 9, 10 |  | Rashid Ashatovich Ginniatullin |
| 12 | 10 | nature template |  | 1d | 2019-06-21 | 2019-06-21 | 10 |  | Alina Sulemanova |
| 13 | 11 | reduce to 10 pages |  | 5d | 2019-06-24 | 2019-06-28 | 12 |  | Fail Gafarov; Max Talanov; Oleg Gafurov; Rashid Ashatovich Ginniatullin |
| 14 | 12 | create suplimentary |  | 5d | 2019-07-01 | 2019-07-05 | 9, 12, 13 |  | Alina Sulemanova; Fail Gafarov |
| 15 | 13 | 5 pictures |  | 5d | 2019-06-24 | 2019-06-28 | 12 |  | Alina Sulemanova |
| 16 | 14 | polish text |  | 3d | 2019-07-08 | 2019-07-10 | 11, 14 |  | Alina Sulemanova; Fail Gafarov; Max Talanov; Rashid Ashatovich Ginniatullin |
| 17 | 15 | proofread |  | 2d | 2019-07-11 | 2019-07-12 | 16 |  | Max Talanov; Rashid Ashatovich Ginniatullin |
| 18 | 16 | Article sent | milestone | 0d | 2019-07-15 | 2019-07-15 | 9, 14, 17 |  |  |
